# TELCOMUNDO

Schedule from MS Project, 2022-03-18 to 2023-08-24, costs in $, A marks actual dates.

## Calendars

- Estándar: Mon-Fri 08:00-12:00, 13:00-17:00; Sat-Sun off. Exceptions (off unless hours are given): 2022-03-21 (Dia San Jose), 2022-04-14 to 2022-04-15 (Jueves Santo), 2022-05-30 (Viernes Santo), 2022-06-20 (Corpus Christi), 2022-06-27 (Sagrado Corazon), 2022-07-04 (San pedro y San Pablo), 2022-07-20 (20 de Julio), 2022-08-15 (La asunción de la Virgen), 2022-10-17 (Dia de la Raza), 2022-11-07 (Todos los Santos), 2022-11-14 (Independencia de Cartagena), 2022-12-08 (Día de la Inmaculada Concepción), 2023-01-09, 2023-03-20, 2023-04-06 to 2023-04-07, 2023-05-01, 2023-05-22, 2023-06-12, 2023-06-19, 2023-07-03, 2023-08-07, 2023-08-21.

## Resources

| Resource | Rate | Cost per use |
| --- | --- | --- |
| Jesus Gomez | 3600 |  |
| Camilo Gallego | 3600 |  |
| Tatiana | 3600 |  |
| Julian Torres | 3600 |  |
| Camila Guerrero | 3600 |  |
| Yisenia Garzon | 3600 |  |
| PC JG |  | 700 |
| PC CG |  | 700 |
| PC T |  | 700 |
| PC JT |  | 700 |
| PC YG |  | 700 |
| Worbench Mysql |  |  |
| Balsamiq |  |  |
| Project Profesional |  |  |
| Dia |  |  |
| Recibo Luz |  |  |
| Recibo Internet |  |  |
| Git Hub -Git |  |  |
| Visual Studio |  |  |
| Java |  |  |
| Lucichart |  |  |
| } |  |  |

## Schedule

| ID | WBS | Task | Duration | Start | Finish | Predecessors | Complete | Remaining | Total slack | Free slack | Constraint | Resources | Work | Actual work | Cost | Actual cost |
| --- | --- | --- | --- | --- | --- | --- | --- | --- | --- | --- | --- | --- | --- | --- | --- | --- |
| 1 | 1 | **SISTEMA TELCOMUNDO** | 345.75d | 2022-03-18 A | 2023-08-16 |  | 94% | 20.95d | 0d |  |  |  | 6320h | 5726.5h | 13,536,000 | 12,006,000 |
| 2 | 1.1 | **Analisis del Proyecto** | 34d | 2022-03-18 A | 2022-05-10 A |  | 100% |  |  |  |  |  | 248h | 248h | 892,800 | 892,800 |
| 3 | 1.1.1 | Nombre del proyecto | 1d | 2022-03-18 A | 2022-03-22 A |  | 100% |  |  |  |  | Jesus Gomez | 8h | 8h | 28,800 | 28,800 |
| 4 | 1.1.2 | Objetivo general | 3d | 2022-03-22 A | 2022-03-25 A | 3 | 100% |  |  |  |  | Tatiana | 24h | 24h | 86,400 | 86,400 |
| 5 | 1.1.3 | Objetivos especificos | 3d | 2022-03-25 A | 2022-03-30 A | 4 | 100% |  |  |  |  | Tatiana | 24h | 24h | 86,400 | 86,400 |
| 6 | 1.1.4 | Planteamiento del problema | 2d | 2022-03-18 A | 2022-03-23 A |  | 100% |  |  |  |  | Julian Torres | 16h | 16h | 57,600 | 57,600 |
| 7 | 1.1.5 | alcance del proyecto | 2d | 2022-03-23 A | 2022-03-25 A | 6 | 100% |  |  |  |  | Jesus Gomez | 16h | 16h | 57,600 | 57,600 |
| 8 | 1.1.6 | **Recopilacion de la informacion** | 30d | 2022-03-25 A | 2022-05-10 A |  | 100% |  |  |  |  |  | 160h | 160h | 576,000 | 576,000 |
| 9 | 1.1.6.1 | Entrevistas | 15d | 2022-03-25 A | 2022-05-03 A | 7 | 100% |  |  |  |  | Julian Torres | 120h | 120h | 432,000 | 432,000 |
| 10 | 1.1.6.2 | Encuesta | 5d | 2022-05-03 A | 2022-05-10 A | 9 | 100% |  |  |  |  | Camilo Gallego | 40h | 40h | 144,000 | 144,000 |
| 11 | 1.2 | Revision | 1d | 2022-05-10 | 2022-05-11 | 10 |  |  | 310.75d |  |  | Jesus Gomez | 8h |  | 28,800 |  |
| 12 | 1.3 | **Planeacion del proyecto** | 114d | 2022-05-11 A | 2022-10-27 A |  | 100% |  |  |  |  |  | 1488h | 1488h | 2,966,400 | 2,966,400 |
| 13 | 1.3.1 | **Requerimientos** | 5d | 2022-05-11 A | 2022-05-18 A |  | 100% |  |  |  |  |  | 80h | 80h | 288,000 | 288,000 |
| 14 | 1.3.1.1 | Funcionales | 5d | 2022-05-11 A | 2022-05-18 A | 11 | 100% |  |  |  |  | Camila Guerrero | 40h | 40h | 144,000 | 144,000 |
| 15 | 1.3.1.2 | No funcionales | 5d | 2022-05-11 A | 2022-05-18 A | 11 | 100% |  |  |  |  | Jesus Gomez | 40h | 40h | 144,000 | 144,000 |
| 16 | 1.3.2 | **Diagramas** | 109d | 2022-05-18 A | 2022-10-27 A |  | 100% |  |  |  |  |  | 1408h | 1408h | 2,678,400 | 2,678,400 |
| 17 | 1.3.2.1 | Modelo entidad relacion | 15d | 2022-05-18 A | 2022-06-09 A | 15 | 100% |  |  |  |  | Dia; Jesus Gomez | 240h | 240h | 432,000 | 432,000 |
| 18 | 1.3.2.2 | Diagrama de Gantt | 39d | 2022-06-09 A | 2022-09-14 A | 17 | 100% |  |  |  |  | Camilo Gallego; Project Profesional | 448h | 448h | 806,400 | 806,400 |
| 19 | 1.3.2.3 | Diagrama de clases | 20d | 2022-09-14 A | 2022-10-12 A | 18 | 100% |  |  |  |  | Camila Guerrero; Dia | 320h | 320h | 576,000 | 576,000 |
| 20 | 1.3.2.4 | BPMN | 10d | 2022-06-09 A | 2022-06-24 A | 17 | 100% |  |  |  |  | Dia; Julian Torres | 160h | 160h | 288,000 | 288,000 |
| 21 | 1.3.2.5 | diagrama de distribucion | 10d | 2022-10-12 A | 2022-10-27 A | 19 | 100% |  |  |  |  | Jesus Gomez; Dia | 160h | 160h | 288,000 | 288,000 |
| 22 | 1.3.2.6 | Diccionario de datos | 10d | 2022-06-24 A | 2022-07-12 A | 20 | 100% |  |  |  |  | Julian Torres | 80h | 80h | 288,000 | 288,000 |
| 23 | 1.4 | Revision | 2d | 2022-11-21 A | 2022-11-23 A | 16 | 100% |  |  |  |  | Jesus Gomez | 16h | 16h | 57,600 | 57,600 |
| 24 | 1.5 | **Ejecucion del proyecto** | 119.88d | 2022-06-24 A | 2022-12-20 |  | 87% | 15.67d | 1.5d |  |  |  | 2286h | 1952.5h | 5,115,600 | 4,168,800 |
| 25 | 1.5.1 | Construccion de la base de datos | 20d | 2022-06-24 A | 2022-07-27 A | 20 | 100% |  |  |  |  | Camila Guerrero; Yisenia Garzon; Worbench Mysql; Git Hub -Git | 640h | 640h | 1,152,000 | 1,152,000 |
| 26 | 1.5.2 | Datos insertados en la base de datos | 5d | 2022-07-27 A | 2022-08-03 A | 25 | 100% |  |  |  |  | Worbench Mysql; Git Hub -Git; Jesus Gomez | 120h | 120h | 144,000 | 144,000 |
| 27 | 1.5.3 | Consulta y joins en la base de datos | 5d | 2022-08-03 A | 2022-08-10 A | 26 | 100% |  |  |  |  | Julian Torres; Worbench Mysql; Git Hub -Git | 120h | 120h | 144,000 | 144,000 |
| 28 | 1.5.4 | Construccion de api | 32.88d | 2022-08-25 A | 2022-12-20 | 33 | 75% | 8.22d | 1.5d | 0d | finish no earlier than 2022-12-05 | Git Hub -Git; Visual Studio; Yisenia Garzon; Jesus Gomez; Camila Guerrero; Julian Torres; Camilo Gallego; Tatiana | 1406h | 1072.5h | 3,675,600 | 2,728,800 |
| 29 | 1.6 | Revision | 2d | 2022-12-21 A | 2022-12-22 | 28 | 75% | 0.5d | 158.88d |  |  | Git Hub -Git; Jesus Gomez; Worbench Mysql | 48h | 36h | 57,600 | 43,200 |

| ID | WBS | Task | Duration | Start | Finish | Predecessors | Complete | Remaining | Total slack | Free slack | Constraint | Resources | Work | Actual work | Cost | Actual cost |
| --- | --- | --- | --- | --- | --- | --- | --- | --- | --- | --- | --- | --- | --- | --- | --- | --- |
| 30 | 1.7 | **Diseño Web** | 35.5d | 2022-11-23 A | 2023-01-13 A |  | 100% |  |  |  |  |  | 275h | 275h | 705,600 | 705,600 |
| 31 | 1.7.1 | Creacion del Mockup | 18.5d | 2022-11-23 A | 2023-01-13 A | 23 | 100% |  |  |  | finish no earlier than 2022-12-02 | Yisenia Garzon; Balsamiq; Jesus Gomez | 275h | 275h | 705,600 | 705,600 |
| 32 | 1.8 | **Codificacion y manejo de CRUD** | 248.75d | 2022-08-10 A | 2023-08-14 |  | 91% | 22.24d | 0d |  |  |  | 1951h | 1711h | 3,711,600 | 3,171,600 |
| 33 | 1.8.1 | Conexión base de datos | 10d | 2022-08-10 A | 2022-08-25 A | 27 | 100% |  |  |  | start no earlier than 2022-08-09 | Git Hub -Git; Worbench Mysql; Camilo Gallego | 80h | 80h | 288,000 | 288,000 |
| 34 | 1.8.2 | Modulos del sistema (CRUD) | 20d | 2022-11-02 A | 2022-12-26 A |  | 100% |  |  |  | start no earlier than 2022-11-02 | Visual Studio; Worbench Mysql; Git Hub -Git; Tatiana | 160h | 160h | 288,000 | 288,000 |
| 35 | 1.8.3 | **Contruccion de manuales** | 155d | 2022-12-26 A | 2023-08-14 |  | 86% | 21.58d | 0d |  |  |  | 1711h | 1471h | 3,135,600 | 2,595,600 |
| 36 | 1.8.3.1 | Usuario | 13.88d | 2022-12-26 A | 2023-06-14 A | 34 | 100% |  |  |  |  | Jesus Gomez; Visual Studio; Worbench Mysql; Git Hub -Git; Julian Torres | 431h | 431h | 687,600 | 687,600 |
| 37 | 1.8.3.2 | Operación | 10d | 2023-06-14 A | 2023-06-29 A | 36 | 100% |  |  |  |  | Visual Studio; Worbench Mysql; Git Hub -Git; Tatiana | 320h | 320h | 288,000 | 288,000 |
| 38 | 1.8.3.3 | **Pruebas del sistema** | 30d | 2023-06-29 A | 2023-08-14 |  | 75% | 7.5d | 0d |  |  |  | 960h | 720h | 2,160,000 | 1,620,000 |
| 39 | 1.8.3.3.1 | pruebas funcionales | 15d | 2023-06-29 A | 2023-07-21 | 37 | 75% | 3.75d | 11.25d | 0d |  | Visual Studio; Git Hub -Git; Worbench Mysql; Camila Guerrero; Tatiana | 600h | 450h | 864,000 | 648,000 |
| 40 | 1.8.3.3.2 | pruebas no funcionales | 15d | 2023-07-21 A | 2023-08-14 | 39 | 75% | 3.75d | 0d |  |  | Yisenia Garzon; Camilo Gallego; Tatiana | 360h | 270h | 1,296,000 | 972,000 |
| 41 | 1.9 | Revision | 2d | 2023-08-14 | 2023-08-16 | 32 |  |  | 0d |  |  |  |  |  |  |  |
| 42 | 2 | Revision final | 5d | 2023-08-16 | 2023-08-24 | 1 |  |  | 0d |  |  |  |  |  |  |  |
